# 迅龙二期_阶段1

Schedule from MS Project, 2017-08-01 to 2017-10-19.
寰�杞�涓�鍥�

## Calendars

- 标准: Mon-Sat 08:00-12:00, 13:00-17:00; Sun off.

## Schedule

| ID | WBS | Task | Duration | Start | Finish | Predecessors | Total slack | Free slack | Constraint |
| --- | --- | --- | --- | --- | --- | --- | --- | --- | --- |
| 1 | 1 | **详细设计** | 20d? | 2017-08-01 | 2017-08-23 |  | 19d | 0d |  |
| 2 | 1.1 | 整体系统框架设计，接口设计，需求点设计 | 20d? | 2017-08-01 | 2017-08-23 |  | 19d | 0d | start no earlier than 2017-08-01 |
| 3 | 1.2 | WEB原型设计 | 20d? | 2017-08-01 | 2017-08-23 |  | 29d |  |  |
| 4 | 1.3 | APP原型设计 | 20d | 2017-08-01 | 2017-08-23 |  | 29d |  |  |
| 5 | 2 | **直播间Studio和MR代码合并(IOS,Android)** | 65d? | 2017-08-01 | 2017-10-14 |  | 4d |  |  |
| 6 | 2.1 | APP端 | 20d? | 2017-08-01 | 2017-08-23 |  | 4d | 0d |  |
| 7 | 2.2 | 主播空间 | 15d? | 2017-08-24 | 2017-09-09 | 6 | 4d | 0d |  |
| 8 | 2.3 | 分享 | 15d? | 2017-09-11 | 2017-09-27 | 7 | 4d | 0d |  |
| 9 | 2.4 | 活动 | 15d? | 2017-09-28 | 2017-10-14 | 8 | 4d |  |  |
| 10 | 2.5 | APP后台业务合并 | 15d? | 2017-08-24 | 2017-09-09 | 1 | 34d |  |  |
| 11 | 3 | **更换腾讯云连麦系统SDK** | 20d | 2017-08-24 | 2017-09-15 | 1 | 29d |  |  |
| 12 | 3.1 | IOS | 20d | 2017-08-24 | 2017-09-15 |  | 29d |  |  |
| 13 | 3.2 | 安卓 | 20d | 2017-08-24 | 2017-09-15 |  | 29d |  |  |
| 14 | 4 | **网页版直播** | 45d | 2017-08-24 | 2017-10-14 | 2 | 4d |  |  |
| 15 | 4.1 | UI部分 | 30d | 2017-08-24 | 2017-09-27 |  | 19d |  |  |
| 16 | 4.2 | 直播页面功能嵌入 | 20d | 2017-09-11 | 2017-10-03 |  | 14d |  | start no earlier than 2017-09-11 |
| 17 | 4.3 | 点播功能页面嵌入 | 20d | 2017-09-11 | 2017-10-03 |  | 14d |  | start no earlier than 2017-09-11 |
| 18 | 4.4 | 网页版管理后台 | 30d | 2017-09-11 | 2017-10-14 |  | 4d |  | start no earlier than 2017-09-11 |
| 19 | 4.5 | 支付模块兼容 | 30d | 2017-09-11 | 2017-10-14 |  | 4d |  | start no earlier than 2017-09-11 |
| 20 | 4.6 | 用户体系嵌入 | 20d | 2017-09-11 | 2017-10-03 |  | 14d |  | start no earlier than 2017-09-11 |
| 21 | 5 | **商城体系** | 69d | 2017-08-01 | 2017-10-19 |  | 0d |  |  |
| 22 | 5.1 | 商品多价格体系(金豆，积分，推荐人返积分） | 15d | 2017-08-01 | 2017-08-17 |  | 14d | 0d |  |
| 23 | 5.2 | APP | 40d | 2017-08-18 | 2017-10-03 | 22 | 14d |  |  |
| 24 | 5.3 | WEB | 40d | 2017-09-04 | 2017-10-19 |  | 0d |  | start no earlier than 2017-09-04 |
